# Loja Virtual - V2007

Schedule from MS Project, 2014-09-16 to 2014-11-12, costs in $.

## Calendars

- Padrão: Mon-Fri 08:00-12:00, 13:00-17:00; Sat-Sun off.

## Resources

| Resource | Rate |
| --- | --- |
| Não Alocado |  |
| Gerente do Projeto | 104.17 |
| Analista de TI | 20.83 |
| Analista de Marketing | 20.83 |
| Fotógrafo | 12.5 |
| Analista de logística | 20.83 |
| Patrocinador | 10 |

## Schedule

| ID | WBS | Task | Duration | Start | Finish | Predecessors | Baseline start | Baseline finish | Baseline duration | Total slack | Free slack | Resources | Work | Cost | Baseline cost |
| --- | --- | --- | --- | --- | --- | --- | --- | --- | --- | --- | --- | --- | --- | --- | --- |
| 1 | 1 | **Planejamento** | 8d | 2014-09-16 | 2014-09-25 |  | 2013-06-03 | 2013-06-24 | 16d | 0d |  |  | 8h | 12,966.14 | 12,781.97 |
| 2 | 1.1 | **Estrutura de Tecnologia da Informação** | 8d | 2014-09-16 | 2014-09-25 |  | 2013-06-03 | 2013-06-24 | 16d | 0d |  |  |  | 6,449.65 | 6,449.65 |
| 3 | 1.1.1 | Definir a hospedagem e administração do site | 4d | 2014-09-16 | 2014-09-19 |  | 2013-06-03 | 2013-06-06 | 4d | 0d |  | Analista de TI [3200%] |  | 666.56 | 666.56 |
| 4 | 1.1.2 | Definir a ferramenta de Tecnologia da informação | 2d | 2014-09-22 | 2014-09-23 | 3 | 2013-06-07 | 2013-06-10 | 2d | 0d |  | Analista de TI [1200%]; Gerente do Projeto [192%] |  | 449.97 | 449.97 |
| 5 | 1.1.3 | Definir o padrão de navegabilidade do site | 2d | 2014-09-24 | 2014-09-25 | 4 | 2013-06-11 | 2013-06-12 | 2d | 34d |  | Analista de TI [1600%] |  | 333.28 | 333.28 |
| 6 | 1.1.4 | Definir o padrão de fotos dos produtos | 0.5d | 2014-09-24 | 2014-09-24 | 4 | 2013-06-13 | 2013-06-13 | 0.5d | 35.5d |  | Analista de TI [800%] |  | 166.64 | 166.64 |
| 7 | 1.1.5 | Definir o padrão de texto dos produtos | 0.5d | 2014-09-24 | 2014-09-24 | 4 | 2013-06-13 | 2013-06-13 | 0.5d | 35d |  | Analista de TI [800%] |  | 166.64 | 166.64 |
| 8 | 1.1.6 | Definir modelo de pedidos (carrinho de compras) | 1d | 2014-09-24 | 2014-09-24 | 4 | 2013-06-14 | 2013-06-14 | 1d | 35d |  | Analista de TI [1600%] |  | 333.28 | 333.28 |
| 9 | 1.1.7 | Definir padrões de segurança do site | 2d | 2014-09-24 | 2014-09-25 | 4 | 2013-06-17 | 2013-06-18 | 2d | 34d |  | Analista de TI [800%]; Gerente do Projeto [800%] |  | 1,000 | 1,000 |
| 10 | 1.1.8 | Definir condições de pagamento | 0.5d | 2014-09-24 | 2014-09-24 | 4 | 2013-06-19 | 2013-06-19 | 0.5d | 34.5d | 0d | Analista de TI [800%] |  | 166.64 | 166.64 |
| 11 | 1.1.9 | Definir bandeiras de cartão de crédito | 0.5d | 2014-09-16 | 2014-09-16 |  | 2013-06-19 | 2013-06-19 | 0.5d | 41d |  | Gerente do Projeto [800%] |  | 833.36 | 833.36 |
| 12 | 1.1.10 | Definir modelo de emissão de Nota Fiscal | 1d | 2014-09-24 | 2014-09-25 | 4, 10 | 2013-06-20 | 2013-06-20 | 1d | 34.5d |  | Analista de TI [1600%] |  | 333.28 | 333.28 |
| 13 | 1.1.11 | Definir padrões de atendimento por chat | 1d | 2014-09-24 | 2014-09-24 | 4 | 2013-06-21 | 2013-06-21 | 1d | 35d |  | Analista de TI [1600%] |  | 333.28 | 333.28 |
| 14 | 1.1.12 | Definir termos e condições gerais do site | 1d | 2014-09-24 | 2014-09-24 | 4 | 2013-06-24 | 2013-06-24 | 1d | 35d |  | Gerente do Projeto [1600%] |  | 1,666.72 | 1,666.72 |
| 15 | 1.2 | **Estrutura de Marketing** | 8d | 2014-09-16 | 2014-09-25 |  | 2013-06-11 | 2013-06-21 | 9d | 2d |  |  |  | 2,666.24 | 2,666.24 |
| 16 | 1.2.1 | Definir categorias de produtos | 1d | 2014-09-24 | 2014-09-24 | 4 | 2013-06-11 | 2013-06-11 | 1d | 0d |  | Analista de Marketing [800%] |  | 166.64 | 166.64 |
| 17 | 1.2.2 | Definir mix de produto por categoria | 1d | 2014-09-25 | 2014-09-25 | 16 | 2013-06-12 | 2013-06-12 | 1d | 34d |  | Analista de Marketing [800%] |  | 166.64 | 166.64 |
| 18 | 1.2.3 | Definir a estrutura de atendimento ao cliente | 2d | 2014-09-16 | 2014-09-17 |  | 2013-06-13 | 2013-06-14 | 2d | 2d | 0d | Analista de Marketing [3200%] |  | 666.56 | 666.56 |
| 19 | 1.2.4 | Definir modelo de propaganda em sites de busca | 3d | 2014-09-16 | 2014-09-18 |  | 2013-06-17 | 2013-06-19 | 3d | 6d | 0d | Analista de Marketing [4800%] |  | 999.84 | 999.84 |
| 20 | 1.2.5 | Definir modelo de CRM | 2d | 2014-09-24 | 2014-09-25 | 4 | 2013-06-20 | 2013-06-21 | 2d | 1d | 0d | Analista de Marketing [3200%] |  | 666.56 | 666.56 |
| 21 | 1.3 | **Estrutura Logística** | 7d | 2014-09-16 | 2014-09-24 |  | 2013-06-03 | 2013-06-18 | 12d | 2d |  |  |  | 3,666.08 | 3,666.08 |
| 22 | 1.3.1 | Definir área de armazenamento | 2d | 2014-09-16 | 2014-09-17 |  | 2013-06-03 | 2013-06-04 | 2d | 2d | 0d | Analista de logística [1600%] |  | 333.28 | 333.28 |
| 23 | 1.3.2 | Definir modelo de mapa de separação (Picking) | 1d | 2014-09-24 | 2014-09-24 | 4, 22 | 2013-06-13 | 2013-06-13 | 1d | 35d |  | Analista de logística [1600%] |  | 333.28 | 333.28 |
| 24 | 1.3.3 | Calcular custos dos serviços de entrega | 2d | 2014-09-16 | 2014-09-17 |  | 2013-06-05 | 2013-06-06 | 2d | 10d |  | Analista de logística [3200%] |  | 666.56 | 666.56 |
| 25 | 1.3.4 | Definir serviços de entrega | 4d | 2014-09-16 | 2014-09-19 |  | 2013-06-07 | 2013-06-12 | 4d | 38d |  | Analista de logística [6400%] |  | 1,333.12 | 1,333.12 |
| 26 | 1.3.5 | Definir modelo de acompanhamento de pedidos | 1d | 2014-09-24 | 2014-09-24 | 4 | 2013-06-14 | 2013-06-14 | 1d | 35d |  | Analista de logística [1600%] |  | 333.28 | 333.28 |
| 27 | 1.3.6 | Definir políticas de trocas e devoluções | 2d | 2014-09-16 | 2014-09-17 |  | 2013-06-17 | 2013-06-18 | 2d | 8d | 0d | Analista de logística [3200%] |  | 666.56 | 666.56 |

| ID | WBS | Task | Type | Duration | Start | Finish | Predecessors | Baseline start | Baseline finish | Baseline duration | Total slack | Free slack | Resources | Work | Cost | Baseline cost |
| --- | --- | --- | --- | --- | --- | --- | --- | --- | --- | --- | --- | --- | --- | --- | --- | --- |
| 28 | 1.4 | **Plano de Gerenciamento do Projeto** |  | 5d | 2014-09-16 | 2014-09-22 |  |  |  |  | 3d |  |  | 8h | 184.17 |  |
| 29 | 1.4.1 | Criar Plano de Gerenciamento do Projeto com seus planos auxiliares e suas linhas de base de escopo, prazo e custo |  | 5d | 2014-09-16 | 2014-09-22 |  |  |  |  | 37d |  | Gerente do Projeto |  | 104.17 |  |
| 30 | 1.4.2 | Aprovar plano | milestone | 1d | 2014-09-16 | 2014-09-16 |  | 2013-06-25 | 2013-06-25 | 1d | 3d | 0d | Patrocinador | 8h | 80 | 1,666.72 |
| 31 | 2 | **Execução** |  | 10d | 2014-09-17 | 2014-09-30 |  | 2013-06-26 | 2013-07-22 | 19d | 0d |  |  |  | 15,186.27 | 15,186.27 |
| 32 | 2.1 | **Estrutura de Tecnologia da Informação** |  | 7d | 2014-09-17 | 2014-09-25 |  | 2013-06-26 | 2013-07-15 | 14d | 3d |  |  |  | 8,832.8 | 8,832.8 |
| 33 | 2.1.1 | Implantação da ferramenta de tecnologia da informação |  | 2d | 2014-09-17 | 2014-09-18 | 30 | 2013-06-26 | 2013-06-27 | 2d | 3d | 0d | Analista de TI [1600%] |  | 333.28 | 333.28 |
| 34 | 2.1.2 | Implantação do padrão de navegabilidade do site |  | 2d | 2014-09-19 | 2014-09-22 | 33 | 2013-06-28 | 2013-07-01 | 2d | 6d |  | Analista de TI [1600%] |  | 333.28 | 333.28 |
| 35 | 2.1.3 | Fotografar e tratar as fotos dos produtos |  | 5d | 2014-09-19 | 2014-09-25 | 33 | 2013-06-28 | 2013-07-04 | 5d | 3d |  | Fotógrafo [4000%] |  | 500 | 500 |
| 36 | 2.1.4 | Escrever os textos explicativos dos produtos |  | 4d | 2014-09-19 | 2014-09-24 | 33 | 2013-06-28 | 2013-07-03 | 4d | 4d |  | Analista de Marketing [3200%] |  | 666.56 | 666.56 |
| 37 | 2.1.5 | Implantar o modelo de carrinho de compras |  | 1d | 2014-09-19 | 2014-09-19 | 33 | 2013-07-02 | 2013-07-02 | 1d | 6d | 0d | Analista de TI [1600%] |  | 333.28 | 333.28 |
| 38 | 2.1.6 | Aplicar testes de padrão de segurança do site |  | 1d | 2014-09-19 | 2014-09-19 | 33 | 2013-07-03 | 2013-07-03 | 1d | 7d |  | Analista de TI [1600%] |  | 333.28 | 333.28 |
| 39 | 2.1.7 | Aplicar testes das condições de pagamento |  | 1d | 2014-09-22 | 2014-09-22 | 33, 37 | 2013-07-04 | 2013-07-04 | 1d | 6d |  | Analista de TI [800%] |  | 166.64 | 166.64 |
| 40 | 2.1.8 | Fechar contratos com as bandeiras de cartão de crédito |  | 3d | 2014-09-17 | 2014-09-19 | 30 | 2013-06-26 | 2013-06-28 | 3d | 7d |  | Gerente do Projeto [2400%] |  | 2,500.08 | 2,500.08 |
| 41 | 2.1.9 | Preparar o software para emitir Notas Fiscais no modelo estabelecido |  | 4d | 2014-09-19 | 2014-09-24 | 33 | 2013-07-05 | 2013-07-10 | 4d | 4d |  | Analista de TI [6400%] |  | 1,333.12 | 1,333.12 |
| 42 | 2.1.10 | Implantar modelo de chat |  | 2d | 2014-09-19 | 2014-09-22 | 33 | 2013-07-11 | 2013-07-12 | 2d | 6d |  | Analista de TI [1600%]; Gerente do Projeto [1600%] |  | 2,000 | 2,000 |
| 43 | 2.1.11 | Disponibilizar os termos e condições gerais do site |  | 1d | 2014-09-19 | 2014-09-19 | 33 | 2013-07-15 | 2013-07-15 | 1d | 7d |  | Analista de TI [1600%] |  | 333.28 | 333.28 |
| 44 | 2.2 | **Estrutura de Marketing** |  | 9d | 2014-09-18 | 2014-09-30 |  | 2013-07-04 | 2013-07-22 | 13d | 0d |  |  |  | 4,853.71 | 4,853.71 |
| 45 | 2.2.1 | Cadastrar produtos para o site dentro das categorias definidas |  | 4d | 2014-09-25 | 2014-09-30 | 16, 30, 33 | 2013-07-04 | 2013-07-09 | 4d | 0d |  | Analista de Marketing [6400%] |  | 1,333.12 | 1,333.12 |
| 46 | 2.2.2 | Selecionar equipe de atendimento ao cliente |  | 2d | 2014-09-18 | 2014-09-19 | 18, 30 | 2013-07-10 | 2013-07-11 | 2d | 2d | 0d | Analista de Marketing [3200%] |  | 666.56 | 666.56 |
| 47 | 2.2.3 | Treinar equipe de atendimento ao cliente |  | 5d | 2014-09-22 | 2014-09-26 | 46 | 2013-07-12 | 2013-07-18 | 5d | 2d |  | Analista de Marketing [4000%] |  | 833.2 | 833.2 |
| 48 | 2.2.4 | Fechar contratos de anúncio em sites de busca |  | 2d | 2014-09-19 | 2014-09-22 | 19, 30 | 2013-07-19 | 2013-07-22 | 2d | 6d |  | Analista de Marketing [1600%]; Gerente do Projeto [1600%] |  | 2,000 | 2,000 |
| 49 | 2.2.5 | Preparar banco de dados para alimentar ferramenta de CRM |  | 2d | 2014-09-26 | 2014-09-29 | 20, 33 | 2013-07-16 | 2013-07-17 | 2d | 1d |  | Analista de TI |  | 20.83 | 20.83 |
| 50 | 2.3 | **Estrutura Logística** |  | 7d | 2014-09-18 | 2014-09-26 |  | 2013-06-26 | 2013-07-18 | 17d | 2d |  |  |  | 1,499.76 | 1,499.76 |
| 51 | 2.3.1 | Mapear a área de armazenamento |  | 2d | 2014-09-18 | 2014-09-19 | 22, 30 | 2013-06-26 | 2013-06-27 | 2d | 2d | 0d | Analista de logística [1600%] |  | 333.28 | 333.28 |
| 52 | 2.3.2 | Implantar mapa de separação (Picking) |  | 2d | 2014-09-22 | 2014-09-23 | 30, 51 | 2013-06-28 | 2013-07-01 | 2d | 2d | 0d | Analista de logística [1600%] |  | 333.28 | 333.28 |
| 53 | 2.3.3 | Treinar equipe para a utilização do padrão de separação dos produtos |  | 2d | 2014-09-24 | 2014-09-25 | 52 | 2013-07-02 | 2013-07-03 | 2d | 2d | 0d | Analista de logística [1600%] |  | 333.28 | 333.28 |
| 54 | 2.3.4 | Testar sistema de acompanhamento de pedidos |  | 1d | 2014-09-26 | 2014-09-26 | 53 | 2013-07-04 | 2013-07-04 | 1d | 2d |  | Analista de logística [400%]; Analista de TI [400%] |  | 166.64 | 166.64 |
| 55 | 2.3.5 | Disponibilizar as políticas de trocas e devoluções |  | 1d | 2014-09-18 | 2014-09-18 | 27, 30 | 2013-07-18 | 2013-07-18 | 1d | 8d |  | Analista de TI [1600%] |  | 333.28 | 333.28 |

| ID | WBS | Task | Duration | Start | Finish | Predecessors | Baseline start | Baseline finish | Baseline duration | Total slack | Resources | Cost | Baseline cost |
| --- | --- | --- | --- | --- | --- | --- | --- | --- | --- | --- | --- | --- | --- |
| 56 | 3 | **Acompanhamento** | 31d | 2014-10-01 | 2014-11-12 |  | 2013-07-23 | 2013-09-03 | 31d | 0d |  | 6,932.26 | 6,932.26 |
| 57 | 3.1 | **Estrutura de Tecnologia da Informação** | 31d | 2014-10-01 | 2014-11-12 |  | 2013-07-23 | 2013-09-03 | 31d | 0d |  | 2,133.03 | 2,133.03 |
| 58 | 3.1.1 | Iniciar as atividades comerciais do site | 1d | 2014-10-01 | 2014-10-01 | 30, 31 | 2013-07-23 | 2013-07-23 | 1d | 0d | Gerente do Projeto [200%]; Analista de TI [200%]; Analista de Marketing [200%]; Analista de logística [200%] | 333.32 | 333.32 |
| 59 | 3.1.2 | Medir desempenho do site em número de acessos | 30d | 2014-10-02 | 2014-11-12 | 58 | 2013-07-24 | 2013-09-03 | 30d | 0d | Analista de TI [2880%] | 599.9 | 599.9 |
| 60 | 3.1.3 | Corrigir problemas de desempenho | 30d | 2014-10-02 | 2014-11-12 | 58 | 2013-07-24 | 2013-09-03 | 30d | 0d | Analista de TI [2880%] | 599.9 | 599.9 |
| 61 | 3.1.4 | Medir quantidade de pedidos efetuados | 30d | 2014-10-02 | 2014-11-12 | 58 | 2013-07-24 | 2013-09-03 | 30d | 0d | Analista de TI [2880%] | 599.9 | 599.9 |
| 62 | 3.2 | **Estrutura de Marketing** | 30d | 2014-10-02 | 2014-11-12 |  | 2013-07-24 | 2013-09-03 | 30d | 0d |  | 2,399.62 | 2,399.62 |
| 63 | 3.2.1 | Medir valores dos pedidos efetuados | 30d | 2014-10-02 | 2014-11-12 | 58 | 2013-07-24 | 2013-09-03 | 30d | 0d | Analista de Marketing [2880%] | 599.9 | 599.9 |
| 64 | 3.2.2 | Medir desempenho da equipe de atendimento ao cliente | 30d | 2014-10-02 | 2014-11-12 | 58 | 2013-07-24 | 2013-09-03 | 30d | 0d | Analista de Marketing [2880%] | 599.9 | 599.9 |
| 65 | 3.2.3 | Medir aumento de market share | 30d | 2014-10-02 | 2014-11-12 | 58 | 2013-07-24 | 2013-09-03 | 30d | 0d | Analista de Marketing [2880%] | 599.9 | 599.9 |
| 66 | 3.2.4 | Medir retorno de email marketing | 30d | 2014-10-02 | 2014-11-12 | 58 | 2013-07-24 | 2013-09-03 | 30d | 0d | Analista de Marketing [2880%] | 599.9 | 599.9 |
| 67 | 3.3 | **Estrutura Logística** | 30d | 2014-10-02 | 2014-11-12 |  | 2013-07-24 | 2013-09-03 | 30d | 0d |  | 2,399.62 | 2,399.62 |
| 68 | 3.3.1 | Analisar a ocupação da área de armazenamento e corrigir erros | 30d | 2014-10-02 | 2014-11-12 | 51, 58 | 2013-07-24 | 2013-09-03 | 30d | 0d | Analista de logística [2880%] | 599.9 | 599.9 |
| 69 | 3.3.2 | Analisar os custos dos serviços de entrega | 30d | 2014-10-02 | 2014-11-12 | 24, 58 | 2013-07-24 | 2013-09-03 | 30d | 0d | Analista de logística [2880%] | 599.9 | 599.9 |
| 70 | 3.3.3 | Medir desempenho da equipe de separação dos pedidos | 30d | 2014-10-02 | 2014-11-12 | 53, 58 | 2013-07-24 | 2013-09-03 | 30d | 0d | Analista de logística [2880%] | 599.9 | 599.9 |
| 71 | 3.3.4 | Medir número de troca e devoluções | 30d | 2014-10-02 | 2014-11-12 | 58 | 2013-07-24 | 2013-09-03 | 30d | 0d | Analista de logística [2880%] | 599.9 | 599.9 |
